# Product Management for Theremizer

Schedule from MS Project, 2019-11-06 to 2019-12-10.
ASG Software Solutions

## Calendars

- Standard: Mon-Fri 08:00-12:00, 13:00-17:00; Sat-Sun off. Exceptions (off unless hours are given): 2019-11-23 08:00-12:00, 13:00-17:00, 2019-11-30 08:00-12:00, 13:00-17:00.

## Resources

| Resource |
| --- |
| Jeff |
| Bader |
| Kai |
| Andrew |

## Schedule

| ID | WBS | Task | Type | Duration | Start | Finish | Predecessors | Total slack | Free slack | Resources | Work | Text2 | Text7 |
| --- | --- | --- | --- | --- | --- | --- | --- | --- | --- | --- | --- | --- | --- |
| 1 | 1 | **Prototyping Hardware & Processor** |  | 8d? | 2019-11-06 08:00 | 2019-11-15 17:00 |  | 0d |  |  | 157h |  |  |
| 2 | 1.1 | **Finalize Sound Generator** |  | 7.62d? | 2019-11-06 08:00 | 2019-11-15 14:00 |  | 0d |  |  | 61h |  |  |
| 3 | 1.1.1 | Move breadboard prototype to protoboard | manual | 5d | 2019-11-06 08:00 | 2019-11-12 17:00 |  |  |  | Jeff | 40h | VPEND/></VP> | Goals and Objectives, List of Constraints |
| 4 | 1.1.2 | Design Test |  | 3h | 2019-11-13 08:00 | 2019-11-13 11:00 | 3 | 5.88d | 0d | Jeff | 3h |  |  |
| 5 | 1.1.3 | Perform Test |  | 1d | 2019-11-13 11:00 | 2019-11-14 11:00 | 4 | 5.88d | 0d | Jeff | 8h |  |  |
| 6 | 1.1.4 | Implement Changes on board |  | 2h | 2019-11-14 11:00 | 2019-11-14 14:00 | 5 | 5.88d | 0d | Jeff | 2h |  |  |
| 7 | 1.1.5 | Final Testing |  | 1d? | 2019-11-14 14:00 | 2019-11-15 14:00 | 6 | 5.88d | 0d | Jeff | 8h |  |  |
| 8 | 1.1.6 | Protoboard functional | milestone | 0d | 2019-11-15 14:00 | 2019-11-15 14:00 | 7 | 5.88d |  |  |  |  |  |
| 9 | 1.2 | **Finalize filter design** |  | 4d | 2019-11-06 08:00 | 2019-11-11 17:00 |  | 9.5d | 4d |  | 32h |  |  |
| 10 | 1.2.1 | Select trim resistor values |  | 2d | 2019-11-06 08:00 | 2019-11-07 17:00 |  | 9.5d | 0d | Andrew | 16h |  |  |
| 11 | 1.2.2 | Test with Sound Generator |  | 2d | 2019-11-08 08:00 | 2019-11-11 17:00 | 10 | 9.5d | 0d | Andrew | 16h |  |  |
| 12 | 1.2.3 | Filters and embiggens signal correctly | milestone | 0d | 2019-11-11 17:00 | 2019-11-11 17:00 | 11 | 9.5d |  |  |  |  |  |
| 13 | 1.3 | **Implement Processor CV Generation** |  | 8d | 2019-11-06 08:00 | 2019-11-15 17:00 |  | 5.5d |  |  | 64h |  |  |
| 14 | 1.3.1 | Research ADC reading and PWM output |  | 2d | 2019-11-06 08:00 | 2019-11-07 17:00 |  | 5.5d | 0d | Bader | 16h |  |  |
| 15 | 1.3.2 | Write code |  | 4d | 2019-11-08 08:00 | 2019-11-13 17:00 | 14 | 5.5d | 0d | Bader | 32h |  |  |
| 16 | 1.3.3 | Test code and rewrite if necessary |  | 2d | 2019-11-14 08:00 | 2019-11-15 17:00 | 15 | 5.5d | 0d | Bader | 16h |  |  |
| 17 | 1.3.4 | Processor outputs control voltage in desired range | milestone | 0d | 2019-11-15 17:00 | 2019-11-15 17:00 | 16 | 5.5d |  | Bader |  |  |  |
| 18 | 2 | **Finalize Schematic** |  | 2d | 2019-11-18 08:00 | 2019-11-19 17:00 | 1 | 5.5d | 0d |  | 16h |  |  |
| 19 | 2.1 | Add changes |  | 1d | 2019-11-18 08:00 | 2019-11-18 17:00 | 2, 9 | 5.5d | 0d | Andrew | 8h |  |  |
| 20 | 2.2 | Pass ERC | milestone | 0d | 2019-11-18 17:00 | 2019-11-18 17:00 | 19 | 5.5d | 0d |  |  |  |  |
| 21 | 2.3 | Review with team |  | 1d | 2019-11-19 08:00 | 2019-11-19 17:00 | 20 | 5.5d | 0d | Andrew | 8h |  |  |
| 22 | 2.4 | Team agrees schematic is finalized | milestone | 0d | 2019-11-19 17:00 | 2019-11-19 17:00 | 21 | 5.5d |  |  |  |  |  |
| 23 | 3 | **Finalize PCB Layout** |  | 3d | 2019-11-20 08:00 | 2019-11-22 17:00 | 18 | 5.5d | 0d |  | 24h |  |  |
| 24 | 3.1 | Layout after schematic finalized |  | 2d | 2019-11-20 08:00 | 2019-11-21 17:00 | 18 | 5.5d | 0d | Andrew | 16h |  |  |
| 25 | 3.2 | Pass DRC | milestone | 0d | 2019-11-21 17:00 | 2019-11-21 17:00 | 24 | 5.5d | 0d |  |  |  |  |
| 26 | 3.3 | Review with team |  | 1d | 2019-11-22 08:00 | 2019-11-22 17:00 | 25 | 5.5d | 0d | Andrew | 8h |  |  |
| 27 | 3.4 | Team agrees layout is finalized | milestone | 0d | 2019-11-22 17:00 | 2019-11-22 17:00 | 26 | 5.5d |  |  |  |  |  |

Notes:
- 1: Text1: VPEND<VP ID="0_134424" TYP="0" />
- 2: Text1: VPEND<VP ID="0_168547" TYP="0" />
- 3: Text1: VPDATA:<VP ID="0_80816" TYP="0"><VP ID="0_97923" TYP="3" /><VP ID="0_80996" TYP="2"><VP ID="0_141944" TYP="3" /><VP ID="0_92093" TYP="3" /><VP ID="0_81772" TYP="3" /></VP><VP ID="0_113117" TYP="2"><VP ID="0_141946" TYP="3" /></VP><VP ID="0_17301" TYP="1"

| ID | WBS | Task | Type | Duration | Start | Finish | Predecessors | Total slack | Free slack | Constraint | Resources | Work |
| --- | --- | --- | --- | --- | --- | --- | --- | --- | --- | --- | --- | --- |
| 28 | 4 | **Order & Receive Parts/PCB** |  | 5.62d | 2019-11-23 08:00 | 2019-11-29 14:00 | 23 | 5.12d | 0.38d |  |  | 48h |
| 29 | 4.1 | Create BOM from EAGLE |  | 3h | 2019-11-23 08:00 | 2019-11-23 11:00 | 23 | 9.75d | 0d |  | Kai | 3h |
| 30 | 4.2 | Order Parts |  | 3h | 2019-11-23 11:00 | 2019-11-23 15:00 | 29 | 9.75d | 0d |  | Kai | 3h |
| 31 | 4.3 | Generate GERBER from eagle |  | 1h | 2019-11-23 15:00 | 2019-11-23 16:00 | 30 | 9.75d | 0d |  | Kai | 1h |
| 32 | 4.4 | Place PCB order |  | 1h | 2019-11-23 16:00 | 2019-11-23 17:00 | 31 | 9.75d |  |  | Kai | 1h |
| 33 | 4.5 | Wait for parts |  | 5d | 2019-11-23 11:00 | 2019-11-29 14:00 |  | 5.12d |  | start no earlier than 2019-11-23 08:00 | Kai | 40h |
| 34 | 4.6 | Parts/PCB's received | milestone | 0d | 2019-11-29 08:00 | 2019-11-29 08:00 |  | 5.75d |  | start no earlier than 2019-11-29 08:00 |  |  |
| 35 | 5 | **Design Enclosure** |  | 7d | 2019-11-06 08:00 | 2019-11-14 17:00 |  | 19.5d |  |  |  | 56h |
| 36 | 5.1 | Research premade vs custom |  | 2d | 2019-11-06 08:00 | 2019-11-07 17:00 |  | 19.5d | 0d |  | Kai | 16h |
| 37 | 5.2 | Get case |  | 2d | 2019-11-08 08:00 | 2019-11-11 17:00 | 36 | 19.5d | 0d |  | Kai | 16h |
| 38 | 5.3 | Case is received | milestone | 0d | 2019-11-11 17:00 | 2019-11-11 17:00 | 37 | 22.5d |  |  | Kai |  |
| 39 | 5.4 | Drill holes and create labels for pots & inputs |  | 3d | 2019-11-12 08:00 | 2019-11-14 17:00 | 37 | 19.5d |  |  | Kai | 24h |
| 40 | 5.5 | Enclosure has required holes and looks "cool" | milestone | 0d | 2019-11-06 08:00 | 2019-11-06 08:00 |  | 26.5d |  |  |  |  |
| 41 | 6 | **Build up boards** |  | 19.75d | 2019-11-08 08:00 | 2019-12-03 15:00 |  | 4.75d |  |  |  | 22h |
| 42 | 6.1 | Train on Reflow Oven |  | 2h | 2019-11-08 08:00 | 2019-11-08 10:00 |  | 24.25d |  | start no earlier than 2019-11-08 08:00 |  |  |
| 43 | 6.2 | Organize parts and highlight placement on layout print out |  | 4h | 2019-11-30 08:00 | 2019-11-30 12:00 | 28 | 4.75d | 0d | start no earlier than 2019-11-30 08:00 | Jeff | 4h |
| 44 | 6.3 | Place SMD and reflow in oven |  | 2d | 2019-11-30 13:00 | 2019-12-03 12:00 | 43 | 4.75d | 0d |  | Jeff | 16h |
| 45 | 6.4 | Solder through hole components |  | 2h | 2019-12-03 13:00 | 2019-12-03 15:00 | 44 | 4.75d | 0d |  | Jeff | 2h |
| 46 | 6.5 | Board has all components placed | milestone | 0d | 2019-12-03 15:00 | 2019-12-03 15:00 | 45 | 4.75d |  |  |  |  |
| 47 | 7 | **Test boards** |  | 1d? | 2019-12-03 08:00 | 2019-12-03 17:00 |  |  |  |  |  | 56h |
| 48 | 7.1 | Create Test Plan |  | 2h | 2019-11-23 08:00 | 2019-11-23 10:00 |  | 13.25d |  | start no earlier than 2019-11-23 08:00 | Jeff | 2h |
| 49 | 7.2 | Describe all test cases: levels, impedances, functionality |  | 2h | 2019-11-23 08:00 | 2019-11-23 10:00 |  | 7.75d |  | start no earlier than 2019-11-23 08:00 | Jeff | 2h |
| 50 | 7.3 | Create test case benches |  | 4h | 2019-12-03 08:00 | 2019-12-03 12:00 | 49 | 0d |  |  | Jeff | 4h |
| 51 | 7.4 | Exhaustively test boards |  | 5d | 2019-12-03 13:00 | 2019-12-10 12:00 | 50 | 0d |  |  | Jeff | 40h |
| 52 | 7.5 | Review Board Test Results |  | 1h | 2019-12-09 08:00 | 2019-12-09 09:00 |  | 1.38d |  | start no earlier than 2019-12-09 08:00 | Jeff | 1h |
| 53 | 7.6 | Implement final board mods, last test |  | 7h | 2019-12-09 08:00 | 2019-12-09 16:00 |  | 0.62d |  | start no earlier than 2019-12-09 08:00 | Jeff | 7h |
| 54 | 7.7 | Working system | milestone | 0d | 2019-12-03 08:00 | 2019-12-03 08:00 |  | 5.5d |  |  |  |  |
| 55 | 8 | Write Up Final Documentation |  | 3d | 2019-12-04 08:00 | 2019-12-06 17:00 |  | 1.5d |  | start no earlier than 2019-12-04 08:00 | Kai | 24h |
